# BBQRMS Project Plan 2011

Schedule from MS Project, 2011-01-03 to 2011-04-18.
LDS Church

## Calendars

- Standard: Mon-Fri 08:00-12:00, 13:00-17:00; Sat-Sun off.

## Resources

| Resource |
| --- |
| Jerod |
| Mike |
| Scott |
| Jessie |

## Schedule

| ID | WBS | Task | Type | Duration | Start | Finish | Predecessors | Total slack | Free slack | Constraint | Resources | Work |
| --- | --- | --- | --- | --- | --- | --- | --- | --- | --- | --- | --- | --- |
| 1 | 1 | **Iteration 1** |  | 13d | 2011-01-03 | 2011-01-19 |  | 62d |  |  |  | 368h |
| 2 | 1.1 | Revise Project Plan |  | 6d | 2011-01-03 | 2011-01-10 |  | 67d | 0d | start no earlier than 2011-01-03 | Jerod; Scott; Mike; Jessie | 192h |
| 3 | 1.2 | Revise SSRS |  | 2d | 2011-01-10 | 2011-01-12 | 2 | 67d | 4d |  | Jerod; Scott; Mike; Jessie | 16h |
| 4 | 1.3 | Revised SSRS Due | milestone | 0d | 2011-01-19 | 2011-01-19 | 2, 3 | 63d |  | start no earlier than 2011-01-19 |  |  |
| 5 | 1.4 | DB Create Script |  | 5d | 2011-01-13 | 2011-01-19 |  | 62d | 0d | start no earlier than 2011-01-13 | Jerod | 40h |
| 6 | 1.5 | BBQRMS-42 Shell - Main application navigation |  | 5d | 2011-01-13 | 2011-01-19 |  | 62d |  | start no earlier than 2011-01-13 | Mike [50%] | 20h |
| 7 | 1.6 | BBQRMS-44 Shell - Setup database server and communication |  | 5d | 2011-01-13 | 2011-01-19 | 5SS | 62d |  |  | Mike [50%] | 20h |
| 8 | 1.7 | BBQRMS-18 Inventory Management - Receive an inventory order |  | 5d | 2011-01-13 | 2011-01-19 |  | 62d |  | start no earlier than 2011-01-13 | Jessie | 40h |
| 9 | 1.8 | BBQRMS-45 Order Entry - Design User Interface for Placing Customer Orders |  | 5d | 2011-01-13 | 2011-01-19 |  | 58d | 0d | start no earlier than 2011-01-13 | Scott | 40h |
| 10 | 1.9 | Graded Checkpoint 1 | milestone | 0d | 2011-01-19 | 2011-01-19 |  | 53d | 0d | start no earlier than 2011-01-19 |  |  |
| 11 | 2 | **Iteration 2** |  | 8d | 2011-01-19 | 2011-01-31 | 10 | 53d |  |  |  | 256h |
| 12 | 2.1 | BBQRMS-22 Security - Users can log in |  | 1d | 2011-01-19 | 2011-01-19 |  | 62d |  |  | Mike | 8h |
| 13 | 2.2 | BBQRMS-23 Security - Users can log out |  | 1d | 2011-01-19 | 2011-01-19 |  | 62d |  |  | Mike | 8h |
| 14 | 2.3 | BBQRMS-43 Reports - Integrated reporting tool |  | 6d | 2011-01-19 | 2011-01-26 |  | 57d |  |  | Mike | 48h |
| 15 | 2.4 | BBQRMS-33 Order Entry - Place and save customer order without taking payment |  | 4d | 2011-01-20 | 2011-01-25 | 9 | 58d |  |  | Scott | 32h |
| 16 | 2.5 | BBQRMS-37 Order Entry - Recall and modify saved customer order |  | 4d | 2011-01-20 | 2011-01-25 | 9 | 58d |  |  | Scott | 32h |
| 17 | 2.6 | BBQRMS-17 Inventory Management - Add Supplier |  | 8d | 2011-01-19 | 2011-01-28 |  | 55d |  |  | Jessie | 64h |
| 18 | 2.7 | BBQRMS-31 Menu Management - Create Menu Item |  | 8d | 2011-01-19 | 2011-01-28 |  | 55d |  |  | Jerod | 64h |
| 19 | 2.8 | Graded Progress Check 2 | milestone | 0d | 2011-01-31 | 2011-01-31 |  | 45d | 0d | start no earlier than 2011-01-31 |  |  |
| 20 | 3 | **Iteration 3** |  | 10d | 2011-01-31 | 2011-02-11 | 19 | 45d |  |  |  | 312h |
| 21 | 3.1 | BBQRMS-36 Cashiering - Accept payment for saved customer order |  | 5d | 2011-01-31 | 2011-02-04 |  | 47d | 0d |  | Scott | 40h |
| 22 | 3.2 | BBQRMS-35 Order Entry - Take a customer order and accept payment |  | 5d | 2011-01-31 | 2011-02-04 |  | 50d |  |  | Scott | 40h |
| 23 | 3.3 | BBQRMS-19 Inventory Management - Reconcile Inventory |  | 10d | 2011-01-31 | 2011-02-11 |  | 45d |  |  | Jessie | 80h |
| 24 | 3.4 | BBQRMS-25 Security - Users can change their PIN |  | 2d | 2011-01-31 | 2011-02-01 |  | 53d |  |  | Mike | 16h |
| 25 | 3.5 | BBQRMS-30 Security - Users can clock in and clock out |  | 4d | 2011-01-31 | 2011-02-03 |  | 51d |  |  | Mike | 32h |
| 26 | 3.6 | BBQRMS-24 Security - Program features are limited by assigned user roles |  | 3d | 2011-01-31 | 2011-02-02 |  | 52d |  |  | Mike | 24h |
| 27 | 3.7 | BBQRMS-39 admin - Add/Modify Employees |  | 5d | 2011-01-31 | 2011-02-04 |  | 50d |  |  | Jerod | 40h |
| 28 | 3.8 | BBQRMS-40 admin - Add/Modify Roles and Privs |  | 5d | 2011-01-31 | 2011-02-04 |  | 50d |  |  | Jerod | 40h |

| ID | WBS | Task | Type | Duration | Start | Finish | Predecessors | Total slack | Free slack | Constraint |
| --- | --- | --- | --- | --- | --- | --- | --- | --- | --- | --- |
| 29 | 4 | **Iteration 4** |  | 15d? | 2011-02-07 | 2011-02-28 | 21 | 35d |  |  |
| 30 | 4.1 | Test Plan |  | 1d? | 2011-02-07 | 2011-02-07 |  | 49d |  |  |
| 31 | 4.2 | Testing Results | milestone | 0d | 2011-02-23 | 2011-02-23 |  | 38d |  | start no earlier than 2011-02-23 |
| 32 | 4.3 | Graded Checkpoint 3 | milestone | 0d | 2011-02-28 | 2011-02-28 |  | 32d | 0d | start no earlier than 2011-02-28 |
| 33 | 5 | Iteration 5 |  | 1d? | 2011-02-28 | 2011-02-28 | 32 | 32d | 0d |  |
| 34 | 6 | Iteration 6 |  | 1d? | 2011-03-01 | 2011-03-01 | 33 | 32d | 15d |  |
| 35 | 7 | **Iteration 7** |  | 8d | 2011-03-23 | 2011-04-04 | 34 | 10d |  |  |
| 36 | 7.1 | Beta Test Results | milestone | 0d | 2011-03-23 | 2011-03-23 |  | 18d |  | start no earlier than 2011-03-23 |
| 37 | 7.2 | Graded Checkpoint 4 | milestone | 0d | 2011-04-04 | 2011-04-04 |  | 9d | 0d | start no earlier than 2011-04-04 |
| 38 | 8 | **Iteration 8** |  | 10d? | 2011-04-04 | 2011-04-18 | 37 | 0d |  |  |
| 39 | 8.1 | Final Delivery to Instructor | milestone | 0d | 2011-04-11 | 2011-04-11 |  | 5d |  | start no earlier than 2011-04-11 |
| 40 | 8.2 | Project Go Live | milestone | 0d | 2011-04-18 | 2011-04-18 |  | 0d |  | start no earlier than 2011-04-18 |
| 41 | 8.3 | BBQRMS-16 Inventory Management - Touch-screen |  | 1d? | 2011-04-04 | 2011-04-04 |  | 9d |  |  |
| 42 | 8.4 | BBQRMS-28 Reports - Daily Sales Report |  | 1d? | 2011-04-04 | 2011-04-04 |  | 9d |  |  |
| 43 | 8.5 | BBQRMS-26 Reports - Income statement |  | 1d? | 2011-04-04 | 2011-04-04 |  | 9d |  |  |
| 44 | 8.6 | BBQRMS-29 Reports - Inventory turns |  | 1d? | 2011-04-04 | 2011-04-04 |  | 9d |  |  |
| 45 | 8.7 | BBQRMS-27 Reports - Weekly prime cost report |  | 1d? | 2011-04-04 | 2011-04-04 |  | 9d |  |  |
| 46 | 8.8 | BBQRMS-34 Cashiering - Split a Check |  | 1d? | 2011-04-04 | 2011-04-04 |  | 9d |  |  |
| 47 | 8.9 | BBQRMS-38 Cashiering - Take multiple methods of payment for a customer order |  | 1d? | 2011-04-04 | 2011-04-04 |  | 9d |  |  |
| 48 | 8.10 | BBQRMS-32 Cook Screen - Complete a Customer Order |  | 1d? | 2011-04-04 | 2011-04-04 |  | 9d |  |  |
| 49 | 8.11 | BBQRMS-2 Daily Shopping List |  | 1d? | 2011-04-04 | 2011-04-04 |  | 9d |  |  |
| 50 | 8.12 | BBQRMS-5 Update UI for user management to be touch friendly |  | 1d? | 2011-04-04 | 2011-04-04 |  | 9d |  |  |
